# ASN1 Verification

How a schedule from Planner changed from version to version. A marks actual dates.

## Version 1 (saved 2019-07-15)

Note of the change: planner file

| ID | WBS | Task | Duration | Start | Finish | Predecessors |
| --- | --- | --- | --- | --- | --- | --- |
| 1 |  | ber_check_tag spec |  | 2019-07-15 | 2019-07-18 |  |
| 2 |  | ber_tlv_length specs |  | 2019-07-18 | 2019-07-29 | 1 |
| 3 |  | spec of ber_check_tag | 0d | 2019-07-29 | 2019-07-29 | 2, 1 |
| 4 |  | ber_check_tag proof |  | 2019-07-18 | 2019-08-07 | 1 |
| 5 |  | ber_tlv_length proofs |  | 2019-07-29 | 2019-08-16 | 2 |
| 6 |  | ber_tlv_tag specs and proofs |  | 2019-07-15 | 2019-08-01 |  |
| 7 |  | Correctness of ber_check_tag | 0d | 2019-08-07 | 2019-08-07 | 4 |
| 8 | 8 | **Boolean decoder** |  | 2019-07-15 | 2019-07-23 |  |
| 9 |  | Spec |  | 2019-07-15 | 2019-07-15 |  |
| 10 |  | Proof |  | 2019-07-15 | 2019-07-23 |  |
| 11 | 9 | **Boolean encoder** |  | 2019-07-15 | 2019-07-23 |  |
| 12 |  | Spec |  | 2019-07-15 | 2019-07-15 |  |
| 13 |  | Proof |  | 2019-07-15 | 2019-07-23 |  |
| 14 |  | Spec and proof of Boolean encoder | 0d | 2019-07-23 | 2019-07-23 | 8 |
| 15 | 11 | **Native Integer decoder** |  | 2019-07-15 | 2019-07-25 |  |
| 16 |  | Spec |  | 2019-07-15 | 2019-07-16 |  |
| 17 | 11.2 | **Proof** |  | 2019-07-17 | 2019-07-25 | 16 |
| 18 |  | ber_decode_primitive |  | 2019-07-17 | 2019-07-25 |  |
| 19 |  | der_write_tag |  | 2019-07-17 | 2019-07-25 |  |
| 20 | 12 | **Native Integer encoder** |  | 2019-07-15 | 2019-07-25 |  |
| 21 |  | Spec |  | 2019-07-15 | 2019-07-16 |  |
| 22 | 12.2 | **Proof** |  | 2019-07-17 | 2019-07-25 | 16 |
| 23 |  | der_encode_primitive |  | 2019-07-17 | 2019-07-25 | 16 |
| 24 |  | integer_compare |  | 2019-07-17 | 2019-07-18 |  |
| 25 |  | Proof automation |  | 2019-08-07 | 2019-08-09 | 7 |
| 26 |  | classifying C constructs, rewriting C code |  | 2019-08-07 | 2019-08-16 | 7 |
| 27 |  | Correctness of Native integer encoder | 0d | 2019-07-25 | 2019-07-25 | 15, 20 |
| 28 | 16 | **Native real decoder** |  | 2019-07-18 | 2019-08-07 | 1 |
| 29 |  | revision of float spec |  | 2019-07-18 | 2019-07-23 |  |
| 30 |  | asn_double2REAL |  | 2019-07-18 | 2019-08-07 |  |
| 31 |  | asn_REAL2double |  | 2019-07-18 | 2019-08-07 |  |
| 32 |  | NativeReal_decode_ber |  | 2019-07-18 | 2019-07-29 |  |
| 33 |  | NativeReal_encode_der |  | 2019-07-18 | 2019-07-29 |  |
| 34 |  | REAL_compare |  | 2019-07-18 | 2019-07-29 |  |
| 35 |  | Native real decoder | 0d | 2019-07-29 | 2019-07-29 | 33, 32 |

## Version 2 (saved 2019-07-16)

Note of the change: planning

Last finish 2019-08-16 → 2020-06-01 (+290d).

Added:

| ID | Task | Start | Finish | Predecessors | Resources |
| --- | --- | --- | --- | --- | --- |
| 11 | Proof | 2019-07-15 | 2019-07-23 |  |  |
| 12 | Roundtrip correctness Boolean | 2019-07-24 | 2019-08-01 | 9, 6 |  |
| 13 | **Primitive encoder** | 2019-07-24 | 2019-08-12 | 9 | Intern1; Intern2 |
| 16 | **Primitive decoder** | 2019-07-24 | 2019-08-01 | 6 | Intern1; Intern2 |
| 21 | Proof | 2019-08-15 | 2019-08-23 | 20 |  |
| 23 | Spec | 2019-08-13 | 2019-08-14 |  |  |
| 25 | der_encode_primitive | 2019-08-15 | 2019-08-23 | 20 |  |
| 36 | NativeReal_encode_der | 2019-09-13 | 2019-09-13 |  |  |
| 37 | Roundtrip correctness Real | 2019-10-03 | 2019-10-31 | 35, 28 |  |
| 38 | **Octet string decoder** | 2019-11-01 | 2020-01-23 | 37 |  |
| 39 | OCTET_STRING_decode_ber | 2019-11-01 | 2020-01-23 |  |  |
| 40 | **Octet string encoder** | 2019-11-01 | 2019-11-11 | 37 |  |
| 41 | OCTET_STRING_encode_der | 2019-11-01 | 2019-11-11 |  |  |
| 42 | Roundtrip correctness Octet string | 2020-01-24 | 2020-03-05 | 39, 40 |  |
| 43 | **Time decoder** | 2020-01-24 | 2020-02-12 | 38 |  |
| 44 | Spec of time type | 2020-01-24 | 2020-02-12 |  |  |
| 45 | GeneralizedTime_compare | 2020-01-24 | 2020-02-12 |  |  |
| 46 | UTCTime_compare | 2020-01-24 | 2020-02-03 |  |  |
| 47 | **Time encoder** | 2019-11-12 | 2019-12-10 | 41 |  |
| 48 | asn_GT2time_frac | 2019-11-12 | 2019-12-10 |  |  |
| 49 | Other simple types | 2020-01-24 | 2020-02-03 | 41, 39 |  |
| 50 | **Choice decoder** | 2020-02-04 | 2020-03-03 | 49 |  |
| 51 | CHOICE_decode_ber | 2020-02-04 | 2020-03-03 |  |  |
| 52 | **Choice encoder** | 2020-02-04 | 2020-02-17 | 49 |  |
| 53 | CHOICE_encode_der | 2020-02-04 | 2020-02-17 |  |  |
| 54 | Roundtrip correctness Choice | 2020-03-04 | 2020-03-23 | 53, 50 |  |
| 55 | **Sequence decoder** | 2020-03-24 | 2020-06-01 | 54 |  |
| 56 | SEQUENCE_decode_ber | 2020-03-24 | 2020-06-01 |  |  |
| 57 | **Sequence encoder** | 2020-03-24 | 2020-04-06 | 54 |  |
| 58 | SEQUENCE_encode_der | 2020-03-24 | 2020-04-06 |  |  |
| 59 | Roundtrip correctness Sequence | 2020-04-07 | 2020-05-05 | 58 |  |
| 60 | **Set_of decoder** | 2020-02-04 | 2020-02-21 | 49 |  |
| 61 | SET_OF_decode_ber | 2020-02-04 | 2020-02-21 |  |  |
| 62 | **Set_of encoder** | 2020-02-04 | 2020-02-12 | 49 |  |
| 63 | SET_OF_encode_der | 2020-02-04 | 2020-02-12 |  |  |
| 64 | SET_OF__encode_sorted | 2020-02-04 | 2020-02-12 |  |  |

Removed: 3 spec of ber_check_tag; 4 ber_check_tag proof; 5 ber_tlv_length proofs; 6 ber_tlv_tag specs and proofs; 7 Correctness of ber_check_tag; 14 Spec and proof of Boolean encoder; 22 Proof

Changed:

| ID | Task | Start | Finish | Duration | Predecessors | Other |
| --- | --- | --- | --- | --- | --- | --- |
| 1 | **Correctness of ber_check_tag** |  | 2019-07-18 → 2019-08-12 (+25d) |  |  | was named ber_check_tag spec; resources Eng1; Eng2 → Eng1; Eng2; Eng3 |
| 2 | **ber_tlv_length** | 2019-07-18 → 2019-07-15 (-3d) | 2019-07-29 → 2019-08-12 (+14d) |  | 1 → none | was named ber_tlv_length specs; resources Eng2; Eng3 → none |
| 3 | Spec |  | 2019-07-15 → 2019-07-23 (+8d) |  |  |  |
| 4 | Proof |  | 2019-07-23 → 2019-08-12 (+20d) |  |  |  |
| 5 | Proof automation | 2019-08-07 → 2019-08-13 (+6d) | 2019-08-09 → 2019-08-15 (+6d) |  | Correctness of ber_check_tag → 1 |  |
| 10 | Spec |  | 2019-07-16 → 2019-07-15 (-1d) |  |  |  |
| 14 | der_encode_primitive | 2019-07-17 → 2019-07-24 (+7d) | 2019-07-25 → 2019-08-01 (+7d) |  | 10 → none |  |
| 15 | der_write_tag | 2019-07-17 → 2019-08-02 (+16d) | 2019-07-25 → 2019-08-12 (+18d) |  | none → 14 |  |
| 17 | ber_decode_primitive | 2019-07-17 → 2019-07-24 (+7d) | 2019-07-25 → 2019-08-01 (+7d) |  |  |  |
| 18 | classifying C constructs, rewriting C code | 2019-08-07 → 2019-08-13 (+6d) | 2019-08-16 → 2019-08-21 (+5d) |  | Correctness of ber_check_tag → 1 |  |
| 19 | **Native Integer decoder** | 2019-07-15 → 2019-08-13 (+29d) | 2019-07-25 → 2019-08-23 (+29d) |  | none → 1, 16 |  |
| 20 | Spec | 2019-07-15 → 2019-08-13 (+29d) | 2019-07-16 → 2019-08-14 (+29d) |  |  |  |
| 22 | **Native Integer encoder** | 2019-07-15 → 2019-08-13 (+29d) | 2019-07-25 → 2019-08-23 (+29d) |  | none → 13 |  |
| 24 | **Proof** | 2019-07-17 → 2019-08-15 (+29d) | 2019-07-25 → 2019-08-23 (+29d) |  | 10 → 20 |  |
| 26 | integer_compare | 2019-07-17 → 2019-08-15 (+29d) | 2019-07-18 → 2019-08-16 (+29d) |  |  |  |
| 27 | Roundtrip correctness Integer | 2019-07-25 → 2019-08-26 (+32d) | 2019-07-25 → 2019-09-12 (+49d) | 0d → none |  | was named Correctness of Native integer encoder; resources Intern1; Intern2 → none |
| 28 | **Native real decoder** | 2019-07-18 → 2019-09-13 (+57d) | 2019-08-07 → 2019-10-02 (+56d) |  | 1 → 27 |  |
| 29 | revision of float spec | 2019-07-18 → 2019-09-13 (+57d) | 2019-07-23 → 2019-09-18 (+57d) |  |  |  |
| 30 | asn_double2REAL | 2019-07-18 → 2019-09-13 (+57d) | 2019-08-07 → 2019-10-02 (+56d) |  |  |  |
| 31 | asn_REAL2double | 2019-07-18 → 2019-09-13 (+57d) | 2019-08-07 → 2019-10-02 (+56d) |  |  |  |
| 32 | NativeReal_decode_ber | 2019-07-18 → 2019-09-13 (+57d) | 2019-07-29 → 2019-09-23 (+56d) |  |  |  |
| 33 | NativeReal_encode_der | 2019-07-18 → 2019-09-13 (+57d) | 2019-07-29 → 2019-09-23 (+56d) |  |  |  |
| 34 | REAL_compare | 2019-07-18 → 2019-09-13 (+57d) | 2019-07-29 → 2019-09-23 (+56d) |  |  |  |
| 35 | **Native real encoder** | 2019-07-29 → 2019-09-13 (+46d) | 2019-07-29 → 2019-09-13 (+46d) | 0d → none | 33, 32 → 27 | was named Native real decoder; resources Eng1; Eng2; Eng3; Intern1 → none |

## Version 3 (saved 2019-07-17)

Note of the change: phase I planning added all functions

Last finish 2020-06-01 → 2020-06-17 (+16d).

Added:

| ID | Task | Duration | Start | Finish | Predecessors | Resources |
| --- | --- | --- | --- | --- | --- | --- |
| 3 | **Specs** |  | 2019-07-15 | 2019-07-23 |  |  |
| 5 | ber_fetch_tag |  | 2019-07-15 | 2019-07-23 |  |  |
| 6 | ber_fetch_length |  | 2019-07-15 | 2019-07-23 |  |  |
| 9 | ber_tlv_tag_serialize |  | 2019-07-15 | 2019-07-23 |  |  |
| 12 | ber_fetch_tag |  | 2019-07-15 | 2019-08-01 |  |  |
| 13 | ber_fetch_length |  | 2019-07-15 | 2019-07-23 |  |  |
| 14 | ber_tlv_tag_string |  | 2019-07-15 | 2019-07-17 |  |  |
| 15 | ber_fetch_length |  | 2019-07-15 | 2019-07-23 |  |  |
| 16 | **Der encoder** |  | 2019-07-15 | 2019-08-01 |  |  |
| 17 | **Specs** |  | 2019-07-15 | 2019-07-17 |  |  |
| 19 | **Proofs** |  | 2019-07-15 | 2019-08-01 |  |  |
| 22 | der_tlv_length_serialize |  | 2019-07-15 | 2019-07-17 |  |  |
| 28 | BOOLEAN_encode_der |  | 2019-07-24 | 2019-07-24 |  |  |
| 30 | Milestone: Boolean encoder/decoder correctness | 0d | 2019-08-12 | 2019-08-12 | 3, 23 |  |
| 31 | **Refactoring and revisions** |  | 2019-08-13 | 2019-08-21 | 30 | Eng1; Eng2; Eng3 |
| 32 | High-level properties |  | 2019-08-13 | 2019-08-21 |  |  |
| 33 | New complexity estimates |  | 2019-08-13 | 2019-08-14 |  |  |
| 35 | Refactoring C code |  | 2019-08-13 | 2019-08-21 | 4 | Eng3 |
| 37 | Milestone: New planning | 0d | 2019-08-14 | 2019-08-14 | 33 |  |
| 38 | **Primitive type** |  | 2019-07-25 | 2019-08-13 | 3 | Intern1; Intern2 |
| 44 | **Native Integer type** |  | 2019-08-14 | 2019-09-13 | 38 | Eng1; Eng2; Eng3 |
| 46 | Specs |  | 2019-08-14 | 2019-08-15 |  |  |
| 48 | NativeInteger_compare |  | 2019-08-16 | 2019-08-20 |  |  |
| 49 | asn_INTEGER2ulong |  | 2019-08-16 | 2019-08-20 |  |  |
| 50 | NativeInteger_decode_ber |  | 2019-08-16 | 2019-08-16 |  |  |
| 53 | **Proof** |  | 2019-08-16 | 2019-08-26 | 46 |  |
| 54 | Integer_compare |  | 2019-08-16 | 2019-08-20 |  |  |
| 55 | INTEGER_encode_der |  | 2019-08-16 | 2019-08-26 |  |  |
| 56 | NativeInteger_encode_der |  | 2019-08-16 | 2019-08-19 |  |  |
| 58 | Milestone: Native Integer encoder/decoder correctness | 0d | 2019-09-13 | 2019-09-13 | 44 |  |
| 59 | **Native Real type** |  | 2019-09-16 | 2019-11-01 | 38 | Eng1; Eng2; Intern1 |
| 69 | Milestone: Native Real encoder/decoder correctness |  | 2019-11-04 | 2019-11-04 | 59 |  |
| 70 | **Octet String type** |  | 2019-11-04 | 2020-03-06 | 38 | Eng1; Eng2; Intern1 |
| 76 | Milestone: Octet String encoder/decoder correctness | 0d | 2020-03-06 | 2020-03-06 | 70 |  |
| 77 | **Time types** |  | 2019-11-13 | 2020-02-13 | 38 | Eng3; Intern1 |
| 84 | Milestone: Time types encoder/decoder correctness | 0d | 2020-02-13 | 2020-02-13 | 77 |  |
| 85 | Milestone: Time library for Coq | 0d | 2020-02-13 | 2020-02-13 | 77 |  |
| 87 | Milestone: All simple types | 0d | 2020-01-30 | 2020-01-30 | 86 |  |
| 88 | **Choice type** |  | 2020-01-30 | 2020-03-19 |  | Eng1; Eng2; Eng3 |
| 91 | _search4tag |  | 2020-01-30 | 2020-02-04 |  |  |
| 92 | other aux functions |  | 2020-01-30 | 2020-02-04 |  |  |
| 95 | CHOICE_outmost_tag |  | 2020-01-30 | 2020-02-04 |  |  |
| 97 | Milestone: Choice encoder/decoder correctness |  | 2020-03-19 | 2020-03-20 | 88 |  |
| 98 | **Sequence type** |  | 2020-03-19 | 2020-05-28 | 88 | Eng1; Eng2; Eng3 |
| 101 | _t2e_cmp |  | 2020-03-19 | 2020-03-20 |  |  |
| 104 | SEQUENCE_OF_ENCODE_der |  | 2020-03-19 | 2020-03-30 |  |  |
| 106 | Milestone: Sequence encoder/decoder correctness |  | 2020-05-28 | 2020-05-29 | 98 |  |
| 107 | **Set type** |  | 2020-05-28 | 2020-06-17 | 98 | Eng1; Eng2; Eng3 |
| 110 | _SET_is_populated |  | 2020-05-28 | 2020-06-01 |  |  |
| 111 | SET_OF_decode_ber |  | 2020-05-28 | 2020-06-17 |  |  |
| 112 | _el_addbytes |  | 2020-05-28 | 2020-06-01 |  |  |
| 113 | _el_buf_cmp |  | 2020-05-28 | 2020-05-29 |  |  |
| 117 | Roundtrip correctness of Set type |  | 2020-05-28 | 2020-06-17 |  |  |
| 118 | Milestone: Set type encoder/decoder correctness | 0d | 2020-06-17 | 2020-06-17 | 107 |  |
| 119 | Milestone: All constructed types correctness | 0d | 2020-06-17 | 2020-06-17 | 107 |  |

Changed:

| ID | Task | Start | Finish | Duration | Predecessors | Other |
| --- | --- | --- | --- | --- | --- | --- |
| 1 | **Important auxiliary functions** |  | 2019-08-12 → 2019-08-23 (+11d) |  |  | was named Correctness of ber_check_tag |
| 2 | **Ber decoder** |  | 2019-08-12 → 2019-08-23 (+11d) |  |  | was named ber_tlv_length |
| 4 | ber_check_tags |  | 2019-08-12 → 2019-07-17 (-26d) |  |  | was named Proof; resources none → Eng1; Eng2; Eng3 |
| 7 | ber_tlv_tag_string |  | 2019-07-15 → 2019-07-17 (+2d) |  |  | was named Spec |
| 8 | ber_fetch_length |  |  |  |  | was named Proof |
| 10 | **Proofs** |  | 2019-07-15 → 2019-08-23 (+39d) |  |  | was named Spec |
| 11 | ber_check_tags |  | 2019-07-23 → 2019-08-23 (+31d) |  |  | was named Proof |
| 18 | der_write_tags | 2019-08-13 → 2019-07-15 (-29d) | 2019-08-21 → 2019-07-17 (-35d) |  | 1 → none | was named classifying C constructs, rewriting C code; resources Eng3 → none |
| 20 | der_write_tags | 2019-08-13 → 2019-07-15 (-29d) | 2019-08-14 → 2019-08-01 (-13d) |  |  | was named Spec |
| 21 | der_write_TL | 2019-08-15 → 2019-07-15 (-31d) | 2019-08-23 → 2019-07-16 (-38d) |  | 20 → none | was named Proof |
| 23 | **Boolean type** | 2019-08-13 → 2019-07-24 (-20d) | 2019-08-14 → 2019-08-12 (-2d) |  | none → 3 | was named Spec; resources none → Intern1; Intern2 |
| 24 | **Boolean decoder** | 2019-07-15 → 2019-07-24 (+9d) | 2019-07-23 → 2019-08-01 (+9d) |  |  |  |
| 25 | BOOLEAN_compare | 2019-08-15 → 2019-07-24 (-22d) | 2019-08-23 → 2019-07-24 (-30d) |  | 20 → none | was named der_encode_primitive |
| 26 | BOOLEAN_decode_ber | 2019-08-15 → 2019-07-24 (-22d) | 2019-08-16 → 2019-08-01 (-15d) |  |  | was named integer_compare |
| 27 | **Boolean encoder** | 2019-07-15 → 2019-07-24 (+9d) | 2019-07-23 → 2019-07-24 (+1d) |  |  |  |
| 29 | Roundtrip correctness Boolean | 2019-07-24 → 2019-08-02 (+9d) | 2019-08-01 → 2019-08-12 (+11d) |  |  |  |
| 34 | Proof automation |  |  |  | 1 → 4 |  |
| 36 | Milestone: Proof automation library | 2019-09-13 → 2019-08-21 (-23d) | 2019-09-13 → 2019-08-21 (-23d) | none → 0d | none → 31 | was named NativeReal_encode_der |
| 39 | **Primitive encoder** | 2019-07-24 → 2019-07-25 (+1d) | 2019-08-12 → 2019-08-13 (+1d) |  |  |  |
| 40 | der_encode_primitive | 2019-07-24 → 2019-07-25 (+1d) | 2019-08-01 → 2019-08-02 (+1d) |  |  |  |
| 41 | der_write_tag | 2019-08-02 → 2019-08-05 (+3d) | 2019-08-12 → 2019-08-13 (+1d) |  |  |  |
| 42 | **Primitive decoder** | 2019-07-24 → 2019-08-02 (+9d) | 2019-08-01 → 2019-08-12 (+11d) |  |  |  |
| 43 | ber_decode_primitive | 2019-07-24 → 2019-08-02 (+9d) | 2019-08-01 → 2019-08-12 (+11d) |  |  |  |
| 45 | **Native Integer decoder** | 2019-08-13 → 2019-08-14 (+1d) | 2019-08-23 → 2019-08-20 (-3d) |  | 1, 42 → 4, 42 |  |
| 47 | **Proof** | 2019-08-15 → 2019-08-16 (+1d) | 2019-08-23 → 2019-08-20 (-3d) |  | 20 → 46 |  |
| 51 | **Native Integer encoder** | 2019-08-13 → 2019-08-14 (+1d) | 2019-08-23 → 2019-08-26 (+3d) |  |  |  |
| 52 | Spec | 2019-07-15 → 2019-08-14 (+30d) | 2019-07-23 → 2019-08-15 (+23d) |  |  |  |
| 57 | Roundtrip correctness Integer | 2019-08-26 → 2019-08-27 (+1d) | 2019-09-12 → 2019-09-13 (+1d) |  |  |  |
| 60 | **Native real decoder** | 2019-09-13 → 2019-09-16 (+3d) | 2019-10-02 → 2019-10-03 (+1d) |  |  |  |
| 61 | revision of float spec | 2019-09-13 → 2019-09-16 (+3d) | 2019-09-18 → 2019-09-19 (+1d) |  |  |  |
| 62 | asn_REAL2double | 2019-09-13 → 2019-09-16 (+3d) | 2019-10-02 → 2019-10-03 (+1d) |  |  |  |
| 63 | NativeReal_decode_ber | 2019-09-13 → 2019-09-16 (+3d) | 2019-09-23 → 2019-09-24 (+1d) |  |  |  |
| 64 | REAL_compare | 2019-09-13 → 2019-09-16 (+3d) | 2019-09-23 → 2019-09-24 (+1d) |  |  |  |
| 65 | **Native real encoder** | 2019-09-13 → 2019-09-16 (+3d) | 2019-09-13 → 2019-10-03 (+20d) |  |  |  |
| 66 | NativeReal_encode_der | 2019-09-13 → 2019-09-16 (+3d) | 2019-09-23 → 2019-09-18 (-5d) |  |  |  |
| 67 | asn_double2REAL | 2019-09-13 → 2019-09-16 (+3d) | 2019-10-02 → 2019-10-03 (+1d) |  |  |  |
| 68 | Roundtrip correctness Real | 2019-10-03 → 2019-10-04 (+1d) | 2019-10-31 → 2019-11-01 (+1d) |  |  |  |
| 71 | **Octet string decoder** | 2019-11-01 → 2019-11-04 (+3d) | 2020-01-23 → 2020-01-24 (+1d) |  |  |  |
| 72 | OCTET_STRING_decode_ber | 2019-11-01 → 2019-11-04 (+3d) | 2020-01-23 → 2020-01-24 (+1d) |  |  |  |
| 73 | **Octet string encoder** | 2019-11-01 → 2019-11-04 (+3d) | 2019-11-11 → 2019-11-12 (+1d) |  |  |  |
| 74 | OCTET_STRING_encode_der | 2019-11-01 → 2019-11-04 (+3d) | 2019-11-11 → 2019-11-12 (+1d) |  |  |  |
| 75 | Roundtrip correctness Octet string | 2020-01-24 → 2020-01-27 (+3d) | 2020-03-05 → 2020-03-06 (+1d) |  |  |  |
| 78 | **Time decoder** | 2020-01-24 → 2020-01-27 (+3d) | 2020-02-12 → 2020-02-13 (+1d) |  |  |  |
| 79 | Spec of time type | 2020-01-24 → 2020-01-27 (+3d) | 2020-02-12 → 2020-02-13 (+1d) |  |  |  |
| 80 | GeneralizedTime_compare | 2020-01-24 → 2020-01-27 (+3d) | 2020-02-12 → 2020-02-13 (+1d) |  |  |  |
| 81 | UTCTime_compare | 2020-01-24 → 2020-01-27 (+3d) | 2020-02-03 → 2020-02-04 (+1d) |  |  |  |
| 82 | **Time encoder** | 2019-11-12 → 2019-11-13 (+1d) | 2019-12-10 → 2019-12-11 (+1d) |  |  |  |
| 83 | asn_GT2time_frac | 2019-11-12 → 2019-11-13 (+1d) | 2019-12-10 → 2019-12-11 (+1d) |  |  |  |
| 86 | Other simple types | 2020-01-24 → 2020-01-27 (+3d) | 2020-02-03 → 2020-01-30 (-4d) |  |  | resources none → Intern1; Intern2 |
| 89 | **Choice decoder** | 2020-02-04 → 2020-01-30 (-5d) | 2020-03-03 → 2020-02-28 (-4d) |  |  |  |
| 90 | CHOICE_decode_ber | 2020-02-04 → 2020-01-30 (-5d) | 2020-03-03 → 2020-02-28 (-4d) |  |  |  |
| 93 | **Choice encoder** | 2020-02-04 → 2020-01-30 (-5d) | 2020-02-17 → 2020-02-13 (-4d) |  |  |  |
| 94 | CHOICE_encode_der | 2020-02-04 → 2020-01-30 (-5d) | 2020-02-17 → 2020-02-13 (-4d) |  |  |  |
| 96 | Roundtrip correctness Choice | 2020-03-04 → 2020-02-28 (-5d) | 2020-03-23 → 2020-03-19 (-4d) |  |  |  |
| 99 | **Sequence decoder** | 2020-03-24 → 2020-03-19 (-5d) | 2020-06-01 → 2020-05-28 (-4d) |  |  |  |
| 100 | SEQUENCE_decode_ber | 2020-03-24 → 2020-03-19 (-5d) | 2020-06-01 → 2020-05-28 (-4d) |  |  |  |
| 102 | **Sequence encoder** | 2020-03-24 → 2020-03-19 (-5d) | 2020-04-06 → 2020-04-02 (-4d) |  |  |  |
| 103 | SEQUENCE_encode_der | 2020-03-24 → 2020-03-19 (-5d) | 2020-04-06 → 2020-04-02 (-4d) |  |  |  |
| 105 | Roundtrip correctness Sequence | 2020-04-07 → 2020-04-02 (-5d) | 2020-05-05 → 2020-05-01 (-4d) |  |  |  |
| 108 | **Set_of decoder** | 2020-02-04 → 2020-05-28 (+114d) | 2020-02-21 → 2020-06-17 (+117d) |  |  |  |
| 109 | SET_OF_decode_ber | 2020-02-04 → 2020-05-28 (+114d) | 2020-02-21 → 2020-06-17 (+117d) |  |  |  |
| 114 | **Set_of encoder** | 2020-02-04 → 2020-05-28 (+114d) | 2020-02-12 → 2020-06-08 (+117d) |  |  |  |
| 115 | SET_OF_encode_der | 2020-02-04 → 2020-05-28 (+114d) | 2020-02-12 → 2020-06-08 (+117d) |  |  |  |
| 116 | SET_OF__encode_sorted | 2020-02-04 → 2020-05-28 (+114d) | 2020-02-12 → 2020-06-08 (+117d) |  |  |  |

## Version 4 (saved 2019-07-17)

Note of the change: phase I planning added milestones

Last finish stays 2020-06-17.

Added:

| ID | Task | Duration | Start | Finish | Predecessors |
| --- | --- | --- | --- | --- | --- |
| 23 | der_write_TL |  | 2019-07-15 | 2019-07-16 |  |
| 24 | der_tlv_length_serialize |  | 2019-07-15 | 2019-07-17 |  |
| 25 | Milestone: ber_check_tag correctness | 0d | 2019-08-23 | 2019-08-23 | 1 |
| 35 | Formulating high-level properties |  | 2019-08-13 | 2019-08-21 |  |

Removed: 32 High-level properties

Changed:

| ID | Task | Finish |
| --- | --- | --- |
| 19 | der_write_TL | 2019-07-16 → 2019-07-15 (-1d) |
| 20 | der_tlv_length_serialize | 2019-07-17 → 2019-07-15 (-2d) |
