# ASN1 Verification

How a schedule from Planner changed from version to version. A marks actual dates.

## Version 1 (saved 2019-07-19)

Note of the change: Separate sources from miscellaneous files

| ID | Task | Duration | Start | Finish | Predecessors |
| --- | --- | --- | --- | --- | --- |
| 1 | Formalization of ASN1 specification |  | 2019-07-15 | 2019-08-02 |  |
| 2 | Milestone: X.509 part of ASN1 standrad formalized | 0d | 2019-08-02 | 2019-08-02 | 1 |
| 3 | Refactoring C code |  | 2019-07-15 | 2019-08-23 |  |
| 4 | Primitive types verification |  | 2019-08-26 | 2019-12-25 | 3, 1 |
| 5 | Refactoring and revisions |  | 2019-12-25 | 2020-01-08 | 4 |
| 6 | Milestone: primitive types correctness | 0d | 2019-12-25 | 2019-12-25 | 4 |
| 7 | Constructed types verification |  | 2020-01-08 | 2020-03-18 | 5, 6 |
| 8 | Milestone: constructed types correctness | 0d | 2020-03-18 | 2020-03-18 | 7 |
| 9 | High-level properties |  | 2020-03-18 | 2020-04-08 | 1, 4, 7 |
| 10 | Milesotone: highl-level properties proof | 0d | 2020-04-08 | 2020-04-08 | 9 |
| 11 | Report/paper |  | 2020-04-08 | 2020-04-17 | 9 |
| 12 | Milestone: report | 0d | 2020-04-17 | 2020-04-17 | 11 |

## Version 2 (saved 2019-07-22)

Note of the change: html versions of planning and some fixes

Last finish 2020-04-17 → 2020-03-27 (-21d).

Changed:

| ID | Task | Start | Finish | Predecessors |
| --- | --- | --- | --- | --- |
| 4 | Primitive types verification | 2019-08-26 → 2019-08-05 (-21d) | 2019-12-25 → 2019-12-04 (-21d) | 3, 1 → 1 |
| 5 | Refactoring and revisions | 2019-12-25 → 2019-12-04 (-21d) | 2020-01-08 → 2019-12-18 (-21d) |  |
| 6 | Milestone: primitive types correctness | 2019-12-25 → 2019-12-04 (-21d) | 2019-12-25 → 2019-12-04 (-21d) |  |
| 7 | Constructed types verification | 2020-01-08 → 2019-12-18 (-21d) | 2020-03-18 → 2020-02-26 (-21d) |  |
| 8 | Milestone: constructed types correctness | 2020-03-18 → 2020-02-26 (-21d) | 2020-03-18 → 2020-02-26 (-21d) |  |
| 9 | High-level properties | 2020-03-18 → 2020-02-26 (-21d) | 2020-04-08 → 2020-03-18 (-21d) |  |
| 10 | Milesotone: highl-level properties proof | 2020-04-08 → 2020-03-18 (-21d) | 2020-04-08 → 2020-03-18 (-21d) |  |
| 11 | Report/paper | 2020-04-08 → 2020-03-18 (-21d) | 2020-04-17 → 2020-03-27 (-21d) |  |
| 12 | Milestone: report | 2020-04-17 → 2020-03-27 (-21d) | 2020-04-17 → 2020-03-27 (-21d) |  |
